# 资源分配 - 人力资源

Schedule from MS Project, 2020-03-02 to 2020-06-26, scheduled back from the finish, costs in ¥.

## Calendars

- 标准: Mon-Fri 08:00-12:00, 13:00-17:00; Sat-Sun off.

## Resources

| Resource | Group |
| --- | --- |
| 李文柔 | 项目经理 |
| 黄斯媛 | UI专家 |
| 孙梦涵 | 设计专家 |
| 赵婧瑜 | 需求专家 |
| 李诗凡 | 质量专家 |
| 孙 | 程序员1 |
| 李 | 程序员2 |
| 黄 | 程序员3 |
| 赵 | 程序员4 |
| 郑雨露 | 测试员1 |
| 李梦雪 |  |
| 梦雪 |  |

## Schedule

| ID | WBS | Task | Type | Duration | Start | Finish | Predecessors | Constraint | Resources | Work | Cost |
| --- | --- | --- | --- | --- | --- | --- | --- | --- | --- | --- | --- |
| 1 | 1 | **启动** |  | 6d | 2020-03-02 | 2020-03-09 |  | as late as possible |  | 120h | 8,000 |
| 2 | 1.1 | 任命项目经理 | manual | 1d | 2020-03-02 | 2020-03-02 |  | as late as possible |  |  |  |
| 3 | 1.2 | 组件核心团队 | manual | 1d | 2020-03-03 | 2020-03-03 |  | as late as possible | 李文柔; 黄斯媛; 孙梦涵; 赵婧瑜; 李诗凡 | 40h | 2,560 |
| 4 | 1.3 | 制定里程碑计划 | manual | 1d | 2020-03-04 | 2020-03-04 |  | as late as possible | 李文柔; 赵婧瑜; 李诗凡 | 24h | 1,600 |
| 5 | 1.4 | 分析干系人 | manual | 1d | 2020-03-05 | 2020-03-05 |  | as late as possible | 李文柔 | 8h | 640 |
| 6 | 1.5 | 制定项目章程 | manual | 1d | 2020-03-06 | 2020-03-06 | 2, 3, 4, 5 | as late as possible | 李文柔 | 8h | 640 |
| 7 | 1.6 | 项目启动大会 | manual | 1d | 2020-03-09 | 2020-03-09 | 6 | as late as possible | 李文柔; 黄斯媛; 孙梦涵; 赵婧瑜; 李诗凡 | 40h | 2,560 |
| 8 | 2 | **规划** |  | 57d | 2020-03-10 | 2020-05-27 |  | as late as possible |  | 464h | 33,280 |
| 9 | 2.1 | **规划范围** |  | 23d | 2020-03-10 | 2020-04-09 |  | as late as possible |  | 184h | 12,000 |
| 10 | 2.1.1 | 制定需求说明书 | manual | 7d | 2020-03-10 | 2020-03-18 | 7 | as late as possible | 赵婧瑜 | 56h | 3,360 |
| 11 | 2.1.2 | 界面设计 | manual | 5d | 2020-03-19 | 2020-03-25 | 10 | as late as possible | 黄斯媛 | 40h | 2,000 |
| 12 | 2.1.3 | 详细设计说明书 | manual | 5d | 2020-03-26 | 2020-04-01 | 10 | as late as possible | 孙梦涵 | 40h | 2,800 |
| 13 | 2.1.4 | 范围说明书 | manual | 3d | 2020-04-02 | 2020-04-06 | 10 | as late as possible | 李文柔 | 24h | 1,920 |
| 14 | 2.1.5 | 创建WBS | manual | 2d | 2020-04-07 | 2020-04-08 | 11, 12, 13 | as late as possible | 李文柔 | 16h | 1,280 |
| 15 | 2.1.6 | 形成范围基准 | manual | 1d | 2020-04-09 | 2020-04-09 | 14 | as late as possible | 李文柔 | 8h | 640 |
| 16 | 2.2 | **规划时间** |  | 6d | 2020-04-10 | 2020-04-17 |  | as late as possible |  | 48h | 3,840 |
| 17 | 2.2.1 | 排列工作包顺序 | manual | 1d | 2020-04-10 | 2020-04-10 | 15 | as late as possible | 李文柔 | 8h | 640 |
| 18 | 2.2.2 | 估算资源 | manual | 2d | 2020-04-13 | 2020-04-14 | 17 | as late as possible | 李文柔 | 16h | 1,280 |
| 19 | 2.2.3 | 估算持续时间 | manual | 1d | 2020-04-15 | 2020-04-15 | 18 | as late as possible | 李文柔 | 8h | 640 |
| 20 | 2.2.4 | 制定进度计划 | manual | 1d | 2020-04-16 | 2020-04-16 | 19 | as late as possible | 李文柔 | 8h | 640 |
| 21 | 2.2.5 | 形成进度计划 | manual | 1d | 2020-04-17 | 2020-04-17 | 20 | as late as possible | 李文柔 | 8h | 640 |
| 22 | 2.3 | **规划成本** |  | 6d | 2020-04-20 | 2020-04-27 |  | as late as possible |  | 48h | 3,840 |
| 23 | 2.3.1 | 项目成本估算 | manual | 3d | 2020-04-20 | 2020-04-22 | 21 | as late as possible | 李文柔 | 24h | 1,920 |
| 24 | 2.3.2 | 项目预算 | manual | 2d | 2020-04-23 | 2020-04-24 | 23 | as late as possible | 李文柔 | 16h | 1,280 |
| 25 | 2.3.3 | 形成范围基准 | manual | 1d | 2020-04-27 | 2020-04-27 | 24 | as late as possible | 李文柔 | 8h | 640 |

| ID | WBS | Task | Type | Duration | Start | Finish | Predecessors | Constraint | Resources | Work | Cost |
| --- | --- | --- | --- | --- | --- | --- | --- | --- | --- | --- | --- |
| 26 | 2.4 | **规划质量** |  | 7d | 2020-04-28 | 2020-05-06 |  | as late as possible |  | 56h | 3,360 |
| 27 | 2.4.1 | 制定测试计划 | manual | 2d | 2020-04-28 | 2020-04-29 | 15 | as late as possible | 李诗凡 | 16h | 960 |
| 28 | 2.4.2 | 制定测试用例 | manual | 5d | 2020-04-30 | 2020-05-06 | 27 | as late as possible | 李诗凡 | 40h | 2,400 |
| 29 | 2.5 | **规划人力资源** |  | 4d | 2020-05-06 | 2020-05-11 |  | as late as possible |  | 32h | 2,560 |
| 30 | 2.5.1 | 制定人力资源计划 | manual | 2d | 2020-05-06 | 2020-05-07 | 18 | as late as possible | 李文柔 | 16h | 1,280 |
| 31 | 2.5.2 | 制定人员配备管理计划 | manual | 2d | 2020-05-08 | 2020-05-11 | 30 | as late as possible | 李文柔 | 16h | 1,280 |
| 32 | 2.6 | **规划沟通** |  | 1d | 2020-05-12 | 2020-05-12 |  | as late as possible |  | 8h | 640 |
| 33 | 2.6.1 | 制定沟通管理计划 | manual | 1d | 2020-05-12 | 2020-05-12 | 31 | as late as possible | 李文柔 | 8h | 640 |
| 34 | 2.7 | **规划采购** |  | 7d | 2020-05-13 | 2020-05-21 |  | as late as possible |  | 56h | 4,480 |
| 35 | 2.7.1 | 自制外购分析 | manual | 2d | 2020-05-13 | 2020-05-14 | 18 | as late as possible | 李文柔 | 16h | 1,280 |
| 36 | 2.7.2 | 制定采购文件 | manual | 5d | 2020-05-15 | 2020-05-21 | 35 | as late as possible | 李文柔 | 40h | 3,200 |
| 37 | 2.8 | **规划风险** |  | 4d | 2020-05-22 | 2020-05-27 |  | as late as possible |  | 24h | 1,920 |
| 38 | 2.8.1 | 识别风险 | manual | 1d | 2020-05-22 | 2020-05-22 | 16, 22, 26, 29, 32, 34 | as late as possible | 李文柔 | 8h | 640 |
| 39 | 2.8.2 | 风险分析 | manual | 1d | 2020-05-25 | 2020-05-25 | 38 | as late as possible | 李文柔 | 8h | 640 |
| 40 | 2.8.3 | 制定风险登记册 | manual | 1d | 2020-05-26 | 2020-05-26 | 39 | as late as possible | 李文柔 | 8h | 640 |
| 41 | 2.9 | 规划整合 | manual | 1d | 2020-05-27 | 2020-05-27 | 40 | as late as possible | 李文柔 | 8h | 640 |
| 42 | 3 | **执行与监控** |  | 17d | 2020-05-28 | 2020-06-19 |  | as late as possible |  | 600h | 39,320 |
| 43 | 3.1 | 组建项目团队 | manual | 3d | 2020-05-28 | 2020-06-01 | 8 | as late as possible | 李文柔; 郑雨露; 孙梦涵 | 48h | 3,360 |
| 44 | 3.2 | **项目执行** |  | 15d | 2020-05-29 | 2020-06-18 |  | as late as possible |  | 176h | 11,640 |
| 45 | 3.2.1 | **用户模块** |  | 14d | 2020-05-29 | 2020-06-17 |  | as late as possible |  | 96h | 7,120 |
| 46 | 3.2.1.1 | 注册登录 | manual | 2d | 2020-05-29 | 2020-06-01 | 43 | as late as possible | 孙梦涵 | 16h | 1,120 |
| 47 | 3.2.1.2 | 首页 | manual | 3d | 2020-06-02 | 2020-06-08 | 46 | as late as possible | 孙梦涵 | 24h | 1,680 |
| 48 | 3.2.1.3 | 实时定位 | manual | 1d | 2020-06-04 | 2020-06-04 | 47 | as late as possible | 孙梦涵 | 8h | 560 |
| 49 | 3.2.1.4 | 搜索位置 | manual | 1d | 2020-06-05 | 2020-06-05 | 48 | as late as possible | 孙梦涵 | 8h | 560 |
| 50 | 3.2.1.5 | 查看停车场信息 | manual | 1d | 2020-06-08 | 2020-06-08 | 47 | as late as possible | 李文柔 | 8h | 640 |
| 51 | 3.2.1.6 | 绑定车牌号 | manual | 1d | 2020-06-12 | 2020-06-12 | 46 | as late as possible | 李文柔 | 8h | 640 |
| 52 | 3.2.1.7 | 扫码付款 | manual | 1d | 2020-06-15 | 2020-06-15 | 43 | as late as possible | 李文柔 | 8h | 640 |
| 53 | 3.2.1.8 | 查看道路情况 | manual | 1d | 2020-06-16 | 2020-06-16 | 47 | as late as possible | 李文柔 | 8h | 640 |
| 54 | 3.2.1.9 | 个人信息页 | manual | 1d | 2020-06-17 | 2020-06-17 | 46 | as late as possible | 李文柔 | 8h | 640 |

| ID | WBS | Task | Type | Duration | Start | Finish | Predecessors | Constraint | Resources | Work | Cost |
| --- | --- | --- | --- | --- | --- | --- | --- | --- | --- | --- | --- |
| 55 | 3.2.2 | **停车场提供商** |  | 5d | 2020-06-12 | 2020-06-18 |  | as late as possible |  | 32h | 1,640 |
| 56 | 3.2.2.1 | 注册入住 | manual | 2d | 2020-06-12 | 2020-06-15 | 43 | as late as possible | 黄斯媛 | 16h | 800 |
| 57 | 3.2.2.2 | 查看停车情况 | manual | 1d | 2020-06-16 | 2020-06-16 | 56 | as late as possible | 黄斯媛 | 8h | 400 |
| 58 | 3.2.2.3 | 提供商配置 | manual | 1d | 2020-06-17 | 2020-06-17 | 57 | as late as possible | 孙 | 8h | 440 |
| 59 | 3.2.3 | **管理员模块** |  | 7d | 2020-06-10 | 2020-06-18 |  | as late as possible |  | 48h | 2,880 |
| 60 | 3.2.3.1 | 提供商审核 | manual | 4d | 2020-06-10 | 2020-06-15 | 58 | as late as possible | 赵婧瑜 | 32h | 1,920 |
| 61 | 3.2.3.2 | 统计分析 | manual | 1d | 2020-06-16 | 2020-06-16 | 60 | as late as possible | 赵婧瑜 | 8h | 480 |
| 62 | 3.2.3.3 | 备份 | manual | 1d | 2020-06-17 | 2020-06-17 | 61 | as late as possible | 赵婧瑜 | 8h | 480 |
| 63 | 3.3 | **项目监控** |  | 6d | 2020-06-08 | 2020-06-15 |  | as late as possible |  | 96h | 6,560 |
| 64 | 3.3.1 | 各项指标监控 | manual | 1d | 2020-06-12 | 2020-06-12 | 43 | as late as possible | 李文柔; 郑雨露 | 16h | 1,120 |
| 65 | 3.3.2 | 监控评审 | manual | 1d | 2020-06-09 | 2020-06-09 | 64 | as late as possible | 李文柔; 孙梦涵 | 16h | 1,200 |
| 66 | 3.3.3 | 变更评审 | manual | 1d | 2020-06-10 | 2020-06-10 | 65 | as late as possible | 李文柔; 孙梦涵 | 16h | 1,200 |
| 67 | 3.3.4 | 例会 | manual | 1d | 2020-06-15 | 2020-06-15 | 43 | as late as possible | 黄斯媛; 郑雨露; 孙梦涵; 李文柔; 赵婧瑜; 李诗凡 | 48h | 3,040 |
| 68 | 3.4 | **管理干系人** |  | 3d | 2020-06-01 | 2020-06-03 |  | as late as possible |  | 24h | 1,920 |
| 69 | 3.4.1 | 发布项目信息 | manual | 1d | 2020-06-01 | 2020-06-01 | 43 | as late as possible | 李文柔 | 8h | 640 |
| 70 | 3.4.2 | 报告监控指标 | manual | 1d | 2020-06-02 | 2020-06-02 | 43 | as late as possible | 李文柔 | 8h | 640 |
| 71 | 3.4.3 | 干系人沟通 | manual | 1d | 2020-06-03 | 2020-06-03 | 43 | as late as possible | 李文柔 | 8h | 640 |
| 72 | 3.5 | **团队建设** |  | 12d | 2020-06-04 | 2020-06-19 |  | as late as possible |  | 208h | 12,640 |
| 73 | 3.5.1 | 培训 | manual | 1d | 2020-06-18 | 2020-06-18 | 43 | as late as possible | 黄斯媛; 郑雨露; 孙; 李; 黄; 赵; 孙梦涵; 李文柔; 赵婧瑜; 李诗凡 | 80h | 4,800 |
| 74 | 3.5.2 | 娱乐活动 | manual | 1d | 2020-06-19 | 2020-06-19 | 43 | as late as possible | 黄斯媛; 郑雨露; 孙; 李; 黄; 赵; 孙梦涵; 李文柔; 赵婧瑜; 李诗凡 | 80h | 4,800 |
| 75 | 3.5.3 | 沟通 | manual | 1d | 2020-06-16 | 2020-06-16 | 43 | as late as possible | 黄斯媛; 孙梦涵; 郑雨露; 李文柔; 赵婧瑜; 李诗凡 | 48h | 3,040 |
| 76 | 3.6 | 采购 | manual | 1d | 2020-06-04 | 2020-06-04 | 43 | as late as possible | 李文柔 | 8h | 640 |
| 77 | 3.7 | 项目验收 | manual | 1d | 2020-06-11 | 2020-06-11 | 44 | as late as possible | 黄斯媛; 孙梦涵; 李文柔; 赵婧瑜; 李诗凡 | 40h | 2,560 |
| 78 | 4 | **收尾** |  | 5d | 2020-06-22 | 2020-06-26 |  | as late as possible | 李诗凡 | 136h | 8,640 |
| 79 | 4.1 | 项目终验 | manual | 1d | 2020-06-22 | 2020-06-22 | 77 | as late as possible | 黄斯媛; 孙梦涵; 李文柔; 赵婧瑜; 李诗凡 | 40h | 2,560 |
| 80 | 4.2 | 结束采购 | manual | 1d | 2020-06-23 | 2020-06-23 | 77 | as late as possible | 李文柔 | 8h | 640 |
| 81 | 4.3 | 项目内部收尾 | manual | 1d | 2020-06-24 | 2020-06-24 | 77 | as late as possible | 黄斯媛; 赵婧瑜; 郑雨露; 孙梦涵; 李文柔; 李诗凡 | 48h | 3,040 |
